# PSF SINK DEMO

How a schedule from MS Project changed from version to version. A marks actual dates.

## Version 1 (saved 2020-08-28)

Note of the change: Adding requirement doc, Design doc and Project plan

| ID | WBS | Task | Duration | Start | Finish | Predecessors | Complete | Total float |
| --- | --- | --- | --- | --- | --- | --- | --- | --- |
| 1 | 1 | **AE SINK Demo** | 62d | 2020-07-15 A | 2020-10-08 |  | 25% | 0d |
| 2 | 1.1 | **Devlopment** | 52d | 2020-07-15 A | 2020-09-24 |  | 30% | 0d |
| 3 |  | Demo signed off | 5d | 2020-07-15 A | 2020-07-21 A |  | 100% |  |
| 4 |  | Requirement doc signed off | 3d | 2020-07-22 A | 2020-07-24 A | 3 | 100% |  |
| 5 |  | Complete Design doc | 5d | 2020-07-27 A | 2020-07-31 A | 4 | 100% |  |
| 6 |  | EVB available for developer | 0d | 2020-08-14 | 2020-08-14 |  |  | 25d |
| 7 | 1.1.5 | **Complete coding and unit testing** | 31d | 2020-08-03 A | 2020-09-14 | 5 | 9% | 0d |
| 8 |  | Complete PCT | 25d | 2020-08-03 A | 2020-09-04 |  | 4% | 0d |
| 9 |  | Complete ADC | 2d | 2020-09-07 | 2020-09-08 | 8 |  | 0d |
| 10 |  | Integrate with PSF | 2d | 2020-08-07 A | 2020-08-10 A | 9 | 100% |  |
| 11 |  | Reconfigure as per board | 1d | 2020-09-09 | 2020-09-09 | 10, 9 |  | 0d |
| 12 |  | Unit test and fix | 3d | 2020-09-10 | 2020-09-14 | 11 |  | 0d |
| 13 | 1.1.6 | **Developer testing** | 3d | 2020-09-15 | 2020-09-17 | 7 |  | 0d |
| 14 |  | Complete test plan | 0.5d | 2020-09-15 | 2020-09-15 | 12 |  | 0d |
| 15 |  | Code review and fix | 0.5d | 2020-09-15 | 2020-09-15 | 14 |  | 0d |
| 16 |  | Retest and regression | 2d | 2020-09-16 | 2020-09-17 | 15 |  | 0d |
| 17 | 1.1.7 | **Release beta firmware** | 2d | 2020-09-18 | 2020-09-21 | 13, 6 |  | 0d |
| 18 |  | Preprae release collaterals | 1d | 2020-09-18 | 2020-09-18 | 16 |  | 0d |
| 19 |  | Review and fix | 1d | 2020-09-21 | 2020-09-21 | 18 |  | 0d |
| 20 |  | Release Rev A quick start guide for review | 3d | 2020-09-22 | 2020-09-24 | 17 |  | 0d |
| 21 |  | Complete quick start guide | 10d | 2020-09-25 | 2020-10-08 | 20 |  | 0d |

## Version 2 (saved 2020-09-18)

Note of the change: updated MPP

Last finish stays 2020-10-08. Complete tasks 4 → 6.

Changed:

| ID | Task | Start | Finish | Complete | Total float |
| --- | --- | --- | --- | --- | --- |
| 1 | **AE SINK Demo** |  |  | 25% → 59% |  |
| 2 | **Devlopment** |  |  | 30% → 70% |  |
| 6 | EVB available for developer | 2020-08-14 A | 2020-08-14 A | 0% → 100% | 25d → none |
| 7 | **Complete coding and unit testing** |  |  | 9% → 75% |  |
| 8 | Complete PCT |  |  | 4% → 75% | 0d → 1.5d |
| 9 | Complete ADC | 2020-09-07 A |  | 0% → 75% | 0d → 4d |
| 11 | Reconfigure as per board | 2020-09-09 A | 2020-09-09 A | 0% → 100% | 0d → none |
| 12 | Unit test and fix | 2020-09-10 A |  | 0% → 50% |  |
